Schedule from MS Project, 2019-01-01 to 2019-06-20, costs in zł, A marks actual dates.

## Calendars

- Standard: Mon-Fri 08:00-12:00, 13:00-17:00; Sat-Sun off.

## Resources

| Resource | Group | Rate | Cost per use |
| --- | --- | --- | --- |
| Wiesław Wszywka | Project Managers | 110 |  |
| Ferdynand Magellan | Software Developers - Backend | 52.6 |  |
| Karol Wielki | Scrum Masters | 30 |  |
| Marcin Luter | Software Developers - Backend | 68 |  |
| Jan Kalwin | Software Developers - Mobile | 52.75 |  |
| Jan Zamoyski | Software Developers - Mobile | 57 |  |
| Otton III | DevOps Engineers | 75 |  |
| Jan Karol Chodkiewicz | UX Designers | 51 |  |
| Stanisław Staszic | Test Automation Engineers | 25 |  |
| Oktawian August | Product Owners | 50 |  |
| Krzysztof Kolumb | Security Specialists | 57 |  |
| Hugo Kołłątaj | Manual Testers | 30 |  |
| Tadeusz Kościuszko | Manual Testers | 31.25 |  |
| Jerzy Waszyngton | Software Architects | 70 |  |
| IDE licence subscriptions purchase | Software |  | 12000 |
| Zakup licencji Adobe Photoshop JetBrains WebStorm | Software |  | 30000 |
| Zakup Domeny | Infrastruktura |  | 10000 |
| Przestrzeń dyskowa /Serwer | Infrastruktura |  | 200000 |
| Stacje robocze / komputery służbowe | Sprzęt IT |  | 100000 |
| Urządzenia peryferyjne | Sprzęt IT |  | 80000 |

## Schedule

| ID | WBS | Task | Duration | Start | Finish | Predecessors | Complete | Remaining | Total slack | Free slack | Resources | Work | Actual work | Cost | Actual cost |
| --- | --- | --- | --- | --- | --- | --- | --- | --- | --- | --- | --- | --- | --- | --- | --- |
| 1 | 1 | **Prace Początkowe** | 18d | 2019-01-01 08:00 A | 2019-01-24 17:00 |  | 90% | 1.88d |  |  | Zakup licencji Adobe Photoshop JetBrains WebStorm [200%]; Urządzenia peryferyjne [200%]; Stacje robocze / komputery służbowe [200%] | 387.5h | 384h | 232,780.6 | 232,525.6 |
| 2 | 1.1 | Określanie przypadków użycia aplikacji | 40h | 2019-01-01 08:00 A | 2019-01-07 17:00 A |  | 100% |  |  |  | Wiesław Wszywka; Oktawian August; Karol Wielki | 120h | 120h | 7,600 | 7,600 |
| 3 | 1.2 | Definiowanie typów użytkowników | 24h | 2019-01-08 08:00 A | 2019-01-10 17:00 A | 2 | 100% |  |  |  | Oktawian August; Karol Wielki | 48h | 48h | 1,920 | 1,920 |
| 4 | 1.3 | Definiowanie szkicu wczesnych wymagań technicznych | 18h | 2019-01-11 08:00 A | 2019-01-15 10:00 | 3 | 89% | 2h | 3.75d | 0d | Otton III | 18h | 16h | 1,350 | 1,200 |
| 5 | 1.4 | Projektowanie Backendu | 34h | 2019-01-15 08:00 A | 2019-01-21 10:00 | 4 | 94% | 2h | 108.75d |  | Jerzy Waszyngton [50%]; Marcin Luter; Ferdynand Magellan | 49h | 48h | 3,119.6 | 3,049.6 |
| 6 | 1.5 | Projektowanie Mobilnej Aplikacji | 33h | 2019-01-15 08:00 A | 2019-01-21 09:00 | 4 | 97% | 1h | 108.88d |  | Jerzy Waszyngton [50%]; Jan Kalwin; Jan Zamoyski | 48.5h | 48h | 2,911 | 2,876 |
| 7 | 1.6 | Opracowanie koncepcji wczesnego interfejsu użytkownika | 80h | 2019-01-08 08:00 A | 2019-01-21 17:00 A | 2 | 100% |  |  |  | Jan Karol Chodkiewicz | 80h | 80h | 4,080 | 4,080 |
| 8 | 1.7 | Konfiguracja środowiska programistycznego | 24h | 2019-01-21 08:00 A | 2019-01-23 17:00 A | 5, 6 | 100% |  |  |  | Otton III | 24h | 24h | 1,800 | 1,800 |
| 9 | 1.8 | Zakończenie początkowych prac | 3d | 2019-01-23 17:00 A | 2019-01-28 17:00 | 7, 4, 3, 2, 8 |  | 3d | -3d | 0d |  |  |  |  |  |
| 10 | 2 | **Development** | 75d | 2019-01-24 08:00 A | 2019-05-08 17:00 | 9 | 97% | 2.41d | 0d |  | IDE licence subscriptions purchase [200%] | 3603h | 3603h | 190,909.4 | 190,909.4 |
| 11 | 2.1 | **Sprint 1** | 10d | 2019-01-24 08:00 A | 2019-02-06 17:00 A | 9 | 100% |  |  |  |  | 453h | 453h | 26,732 | 26,732 |
| 12 | 2.1.1 | Planowanie Sprint 1 | 3h | 2019-01-24 08:00 A | 2019-01-24 11:00 A |  | 100% |  |  |  | Jan Kalwin; Hugo Kołłątaj; Tadeusz Kościuszko; Krzysztof Kolumb; Jan Zamoyski; Marcin Luter; Stanisław Staszic; Karol Wielki; Otton III; Jan Karol Chodkiewicz; Ferdynand Magellan; Wiesław Wszywka; Jerzy Waszyngton | 39h | 39h | 2,128.8 | 2,128.8 |
| 13 | 2.1.2 | Retrospekcja | 3h | 2019-01-24 11:00 A | 2019-01-24 15:00 A | 12 | 100% |  |  |  | Jan Kalwin; Hugo Kołłątaj; Tadeusz Kościuszko; Krzysztof Kolumb; Jan Zamoyski; Marcin Luter; Stanisław Staszic; Karol Wielki; Otton III; Jan Karol Chodkiewicz; Ferdynand Magellan; Jerzy Waszyngton | 36h | 36h | 1,798.8 | 1,798.8 |
| 14 | 2.1.3 | Podstawowa funkcjonalność aplikacji | 56h | 2019-01-24 15:00 A | 2019-02-04 15:00 A | 13 | 100% |  |  |  | Jan Kalwin; Jan Zamoyski; Marcin Luter; Ferdynand Magellan | 224h | 224h | 12,899.6 | 12,899.6 |
| 15 | 2.1.4 | Podstawowe uwierzytelnianie użytkownika | 16h | 2019-02-04 15:00 A | 2019-02-06 15:00 A | 14 | 100% |  |  |  | Jan Kalwin; Jan Zamoyski; Marcin Luter; Ferdynand Magellan | 64h | 64h | 3,685.6 | 3,685.6 |
| 16 | 2.1.5 | Testowanie środowiska | 24h | 2019-01-24 15:00 A | 2019-01-29 15:00 A | 13 | 100% |  |  |  | Otton III | 24h | 24h | 1,800 | 1,800 |
| 17 | 2.1.6 | Konfiguracja środowiska | 40h | 2019-01-29 15:00 A | 2019-02-05 15:00 A | 16 | 100% |  |  |  | Otton III | 40h | 40h | 3,000 | 3,000 |
| 18 | 2.1.7 | Podsumowanie Sprint 1 | 2h | 2019-02-06 15:00 A | 2019-02-06 17:00 A | 16, 17, 15, 14 | 100% |  |  |  | Jan Kalwin; Hugo Kołłątaj; Tadeusz Kościuszko; Krzysztof Kolumb; Jan Zamoyski; Marcin Luter; Stanisław Staszic; Karol Wielki; Otton III; Jan Karol Chodkiewicz; Ferdynand Magellan; Jerzy Waszyngton; Wiesław Wszywka | 26h | 26h | 1,419.2 | 1,419.2 |
| 19 | 2.2 | **Sprint 2** | 10d | 2019-02-07 08:00 A | 2019-02-20 17:00 A | 18 | 100% |  |  |  |  | 581h | 581h | 24,645.2 | 24,645.2 |
| 20 | 2.2.1 | Planowanie Sprint 2 | 3h | 2019-02-07 08:00 A | 2019-02-07 11:00 A | 18 | 100% |  |  |  | Jan Kalwin; Hugo Kołłątaj; Tadeusz Kościuszko; Krzysztof Kolumb; Jan Zamoyski; Marcin Luter; Stanisław Staszic; Karol Wielki; Otton III; Jan Karol Chodkiewicz; Ferdynand Magellan; Wiesław Wszywka; Jerzy Waszyngton | 39h | 39h | 2,128.8 | 2,128.8 |
| 21 | 2.2.2 | Retrospekcja | 3h | 2019-02-07 11:00 A | 2019-02-07 15:00 A | 20 | 100% |  |  |  | Jan Kalwin; Hugo Kołłątaj; Tadeusz Kościuszko; Krzysztof Kolumb; Jan Zamoyski; Marcin Luter; Stanisław Staszic; Karol Wielki; Otton III; Jan Karol Chodkiewicz; Ferdynand Magellan; Jerzy Waszyngton | 36h | 36h | 1,798.8 | 1,798.8 |
| 22 | 2.2.3 | Testy manualne | 72h | 2019-02-07 15:00 A | 2019-02-20 15:00 A | 21 | 100% |  |  |  | Hugo Kołłątaj; Tadeusz Kościuszko | 144h | 144h | 4,410 | 4,410 |
| 23 | 2.2.4 | Implementacja testów automatycznych | 72h | 2019-02-07 15:00 A | 2019-02-20 15:00 A | 21 | 100% |  |  |  | Stanisław Staszic | 72h | 72h | 1,800 | 1,800 |
| 24 | 2.2.5 | Zbieranie opinii potencjalnych użytkowników | 72h | 2019-02-07 15:00 A | 2019-02-20 15:00 A | 21 | 100% |  |  |  | Oktawian August; Karol Wielki | 144h | 144h | 5,760 | 5,760 |
| 25 | 2.2.6 | Uwierzytelnianie OAuth | 24h | 2019-02-07 15:00 A | 2019-02-12 15:00 A | 21 | 100% |  |  |  | Jan Kalwin; Jan Zamoyski; Marcin Luter; Otton III; Ferdynand Magellan | 120h | 120h | 7,328.4 | 7,328.4 |
| 26 | 2.2.7 | Podsumowanie Sprint 2 | 2h | 2019-02-20 15:00 A | 2019-02-20 17:00 A | 22, 23, 24, 25 | 100% |  |  |  | Jan Kalwin; Hugo Kołłątaj; Tadeusz Kościuszko; Krzysztof Kolumb; Jan Zamoyski; Marcin Luter; Stanisław Staszic; Karol Wielki; Otton III; Jan Karol Chodkiewicz; Ferdynand Magellan; Jerzy Waszyngton; Wiesław Wszywka | 26h | 26h | 1,419.2 | 1,419.2 |

| ID | WBS | Task | Type | Duration | Start | Finish | Predecessors | Complete | Resources | Work | Actual work | Cost | Actual cost |
| --- | --- | --- | --- | --- | --- | --- | --- | --- | --- | --- | --- | --- | --- |
| 27 | 2.3 | **Sprint 3** |  | 10d | 2019-02-21 08:00 A | 2019-03-06 17:00 A | 26 | 100% |  | 381h | 381h | 16,285.2 | 16,285.2 |
| 28 | 2.3.1 | Planowanie Sprint 3 |  | 3h | 2019-02-21 08:00 A | 2019-02-21 11:00 A | 26 | 100% | Jan Kalwin; Hugo Kołłątaj; Tadeusz Kościuszko; Krzysztof Kolumb; Jan Zamoyski; Marcin Luter; Stanisław Staszic; Karol Wielki; Otton III; Jan Karol Chodkiewicz; Ferdynand Magellan; Wiesław Wszywka; Jerzy Waszyngton | 39h | 39h | 2,128.8 | 2,128.8 |
| 29 | 2.3.2 | Retrospekcja |  | 3h | 2019-02-21 11:00 A | 2019-02-21 15:00 A | 28 | 100% | Jan Kalwin; Hugo Kołłątaj; Tadeusz Kościuszko; Krzysztof Kolumb; Jan Zamoyski; Marcin Luter; Stanisław Staszic; Karol Wielki; Otton III; Jan Karol Chodkiewicz; Ferdynand Magellan; Jerzy Waszyngton | 36h | 36h | 1,798.8 | 1,798.8 |
| 30 | 2.3.3 | Testy manualne |  | 72h | 2019-02-21 15:00 A | 2019-03-06 15:00 A | 29 | 100% | Hugo Kołłątaj; Tadeusz Kościuszko | 144h | 144h | 4,410 | 4,410 |
| 31 | 2.3.4 | Implementacja testów automatycznych |  | 40h | 2019-02-21 15:00 A | 2019-02-28 15:00 A | 29 | 100% | Stanisław Staszic | 40h | 40h | 1,000 | 1,000 |
| 32 | 2.3.5 | Usuwanie defektów |  | 24h | 2019-02-28 15:00 A | 2019-03-05 15:00 A | 31 | 100% | Jan Kalwin; Jan Zamoyski; Marcin Luter; Ferdynand Magellan | 96h | 96h | 5,528.4 | 5,528.4 |
| 33 | 2.3.6 | Podsumowanie Sprint 3 |  | 2h | 2019-03-06 15:00 A | 2019-03-06 17:00 A | 30, 31, 32 | 100% | Jan Kalwin; Hugo Kołłątaj; Tadeusz Kościuszko; Krzysztof Kolumb; Jan Zamoyski; Marcin Luter; Stanisław Staszic; Karol Wielki; Otton III; Jan Karol Chodkiewicz; Ferdynand Magellan; Jerzy Waszyngton; Wiesław Wszywka | 26h | 26h | 1,419.2 | 1,419.2 |
| 34 | 2.4 | **Sprint 4** |  | 10d | 2019-03-07 08:00 A | 2019-03-20 17:00 A | 33 | 100% |  | 749h | 749h | 37,552.4 | 37,552.4 |
| 35 | 2.4.1 | Planowanie Sprint 4 |  | 3h | 2019-03-07 08:00 A | 2019-03-07 11:00 A | 33 | 100% | Jan Kalwin; Hugo Kołłątaj; Tadeusz Kościuszko; Krzysztof Kolumb; Jan Zamoyski; Marcin Luter; Stanisław Staszic; Karol Wielki; Otton III; Jan Karol Chodkiewicz; Ferdynand Magellan; Jerzy Waszyngton; Wiesław Wszywka | 39h | 39h | 2,128.8 | 2,128.8 |
| 36 | 2.4.2 | Retrospekcja |  | 3h | 2019-03-07 11:00 A | 2019-03-07 15:00 A | 35 | 100% | Jan Kalwin; Hugo Kołłątaj; Tadeusz Kościuszko; Krzysztof Kolumb; Jan Zamoyski; Marcin Luter; Stanisław Staszic; Karol Wielki; Otton III; Jan Karol Chodkiewicz; Ferdynand Magellan; Jerzy Waszyngton | 36h | 36h | 1,798.8 | 1,798.8 |
| 37 | 2.4.3 | Zbieranie opinii potencjalnych użytkowników |  | 72h | 2019-03-07 15:00 A | 2019-03-20 15:00 A | 36 | 100% | Oktawian August; Karol Wielki | 144h | 144h | 5,760 | 5,760 |
| 38 | 2.4.4 | Testy manualne |  | 72h | 2019-03-07 15:00 A | 2019-03-20 15:00 A | 36 | 100% | Hugo Kołłątaj; Tadeusz Kościuszko | 144h | 144h | 4,410 | 4,410 |
| 39 | 2.4.5 | Usuwanie defektów |  | 16h | 2019-03-07 15:00 A | 2019-03-11 15:00 A | 36 | 100% | Jan Kalwin; Jan Zamoyski; Marcin Luter; Ferdynand Magellan | 64h | 64h | 3,685.6 | 3,685.6 |
| 40 | 2.4.6 | Audyt bezpieczeństwa |  | 8h | 2019-03-11 15:00 A | 2019-03-12 15:00 A | 39 | 100% | Krzysztof Kolumb; Otton III | 16h | 16h | 1,056 | 1,056 |
| 41 | 2.4.7 | Sprawdzanie awaryjności serwerwa |  | 40h | 2019-03-12 15:00 A | 2019-03-19 15:00 A | 40 | 100% | Jan Kalwin; Krzysztof Kolumb; Jan Zamoyski; Marcin Luter; Jerzy Waszyngton; Otton III; Ferdynand Magellan | 280h | 280h | 17,294 | 17,294 |
| 42 | 2.4.8 | Podsumowanie Sprint 4 |  | 2h | 2019-03-20 15:00 A | 2019-03-20 17:00 A | 38, 36, 41 | 100% | Jan Kalwin; Hugo Kołłątaj; Tadeusz Kościuszko; Krzysztof Kolumb; Jan Zamoyski; Marcin Luter; Stanisław Staszic; Karol Wielki; Otton III; Jan Karol Chodkiewicz; Ferdynand Magellan; Jerzy Waszyngton; Wiesław Wszywka | 26h | 26h | 1,419.2 | 1,419.2 |
| 43 | 2.5 | Podstawowa Funkcjonalność | milestone | 0d | 2019-03-20 17:00 A | 2019-03-20 17:00 A | 42 | 100% |  |  |  |  |  |
| 44 | 2.6 | **Sprint 5** |  | 10d | 2019-03-21 08:00 A | 2019-04-03 17:00 A | 43 | 100% |  | 517h | 517h | 25,420.6 | 25,420.6 |
| 45 | 2.6.1 | Planowanie Sprint 5 |  | 3h | 2019-03-21 08:00 A | 2019-03-21 11:00 A | 43 | 100% | Jan Kalwin; Hugo Kołłątaj; Tadeusz Kościuszko; Krzysztof Kolumb; Jan Zamoyski; Marcin Luter; Stanisław Staszic; Karol Wielki; Otton III; Jan Karol Chodkiewicz; Ferdynand Magellan; Jerzy Waszyngton; Wiesław Wszywka | 39h | 39h | 2,128.8 | 2,128.8 |
| 46 | 2.6.2 | Retrospekcja |  | 3h | 2019-03-21 11:00 A | 2019-03-21 15:00 A | 45 | 100% | Jan Kalwin; Hugo Kołłątaj; Tadeusz Kościuszko; Krzysztof Kolumb; Jan Zamoyski; Marcin Luter; Stanisław Staszic; Karol Wielki; Otton III; Jan Karol Chodkiewicz; Ferdynand Magellan; Jerzy Waszyngton | 36h | 36h | 1,798.8 | 1,798.8 |
| 47 | 2.6.3 | Testy manualne |  | 72h | 2019-03-21 15:00 A | 2019-04-03 15:00 A | 46 | 100% | Hugo Kołłątaj; Tadeusz Kościuszko | 144h | 144h | 4,410 | 4,410 |
| 48 | 2.6.4 | Implementacja funkcji geolokalizacji |  | 40h | 2019-03-21 15:00 A | 2019-03-28 15:00 A | 46 | 100% | Jan Kalwin; Jan Zamoyski; Marcin Luter; Ferdynand Magellan | 160h | 160h | 9,214 | 9,214 |
| 49 | 2.6.5 | Wdrażanie ocen Firm |  | 28h | 2019-03-28 15:00 A | 2019-04-03 10:00 A | 48 | 100% | Jan Kalwin; Jan Zamoyski; Marcin Luter; Ferdynand Magellan | 112h | 112h | 6,449.8 | 6,449.8 |
| 50 | 2.6.6 | Podsumowanie Sprint 5 |  | 2h | 2019-04-03 15:00 A | 2019-04-03 17:00 A | 49, 47 | 100% | Jan Kalwin; Hugo Kołłątaj; Tadeusz Kościuszko; Krzysztof Kolumb; Jan Zamoyski; Marcin Luter; Stanisław Staszic; Karol Wielki; Otton III; Jan Karol Chodkiewicz; Ferdynand Magellan; Jerzy Waszyngton; Wiesław Wszywka | 26h | 26h | 1,419.2 | 1,419.2 |

| ID | WBS | Task | Type | Duration | Start | Finish | Predecessors | Complete | Remaining | Total slack | Resources | Work | Actual work | Cost | Actual cost |
| --- | --- | --- | --- | --- | --- | --- | --- | --- | --- | --- | --- | --- | --- | --- | --- |
| 51 | 2.7 | **Sprint 6** |  | 10d | 2019-04-04 08:00 A | 2019-04-17 17:00 A | 50 | 100% |  |  |  | 533h | 533h | 26,342 | 26,342 |
| 52 | 2.7.1 | Planowanie Sprint 6 |  | 2h | 2019-04-04 08:00 A | 2019-04-04 10:00 A | 50 | 100% |  |  | Jan Kalwin; Hugo Kołłątaj; Tadeusz Kościuszko; Krzysztof Kolumb; Jan Zamoyski; Marcin Luter; Stanisław Staszic; Karol Wielki; Otton III; Jan Karol Chodkiewicz; Ferdynand Magellan; Jerzy Waszyngton; Wiesław Wszywka | 26h | 26h | 1,419.2 | 1,419.2 |
| 53 | 2.7.2 | Retrospekcja |  | 3h | 2019-04-04 10:00 A | 2019-04-04 14:00 A | 52 | 100% |  |  | Jan Kalwin; Hugo Kołłątaj; Tadeusz Kościuszko; Krzysztof Kolumb; Jan Zamoyski; Marcin Luter; Stanisław Staszic; Karol Wielki; Otton III; Jan Karol Chodkiewicz; Ferdynand Magellan; Jerzy Waszyngton | 36h | 36h | 1,798.8 | 1,798.8 |
| 54 | 2.7.3 | Testy manualne |  | 72h | 2019-04-04 14:00 A | 2019-04-17 14:00 A | 53 | 100% |  |  | Hugo Kołłątaj; Tadeusz Kościuszko | 144h | 144h | 4,410 | 4,410 |
| 55 | 2.7.4 | Implementacja Map |  | 32h | 2019-04-04 14:00 A | 2019-04-10 14:00 A | 53 | 100% |  |  | Jan Kalwin; Jan Zamoyski; Marcin Luter; Ferdynand Magellan | 128h | 128h | 7,371.2 | 7,371.2 |
| 56 | 2.7.5 | Implementacja kategorii |  | 40h | 2019-04-10 14:00 A | 2019-04-17 14:00 A | 55 | 100% |  |  | Jan Kalwin; Jan Zamoyski; Marcin Luter; Ferdynand Magellan | 160h | 160h | 9,214 | 9,214 |
| 57 | 2.7.6 | Podsumowanie Sprint 6 |  | 3h | 2019-04-17 14:00 A | 2019-04-17 17:00 A | 53, 56, 54 | 100% |  |  | Jan Kalwin; Hugo Kołłątaj; Tadeusz Kościuszko; Krzysztof Kolumb; Jan Zamoyski; Marcin Luter; Stanisław Staszic; Karol Wielki; Otton III; Jan Karol Chodkiewicz; Ferdynand Magellan; Jerzy Waszyngton; Wiesław Wszywka | 39h | 39h | 2,128.8 | 2,128.8 |
| 58 | 2.8 | **Sprint 7** |  | 10d | 2019-04-18 08:00 A | 2019-05-01 17:00 A | 57 | 100% |  |  |  | 389h | 389h | 21,932 | 21,932 |
| 59 | 2.8.1 | Planowanie Sprint 7 |  | 2h | 2019-04-18 08:00 A | 2019-04-18 10:00 A | 57 | 100% |  |  | Jan Kalwin; Hugo Kołłątaj; Tadeusz Kościuszko; Krzysztof Kolumb; Jan Zamoyski; Marcin Luter; Stanisław Staszic; Karol Wielki; Otton III; Jan Karol Chodkiewicz; Ferdynand Magellan; Jerzy Waszyngton; Wiesław Wszywka | 26h | 26h | 1,419.2 | 1,419.2 |
| 60 | 2.8.2 | Retrospekcja |  | 3h | 2019-04-18 10:00 A | 2019-04-18 14:00 A | 59 | 100% |  |  | Jan Kalwin; Hugo Kołłątaj; Tadeusz Kościuszko; Krzysztof Kolumb; Jan Zamoyski; Marcin Luter; Stanisław Staszic; Karol Wielki; Otton III; Jan Karol Chodkiewicz; Ferdynand Magellan; Jerzy Waszyngton | 36h | 36h | 1,798.8 | 1,798.8 |
| 61 | 2.8.3 | Implementacja wyszukiwarki |  | 72h | 2019-04-18 14:00 A | 2019-05-01 14:00 A | 60 | 100% |  |  | Marcin Luter; Ferdynand Magellan | 144h | 144h | 8,683.2 | 8,683.2 |
| 62 | 2.8.4 | Usuwanie defektów |  | 72h | 2019-04-18 14:00 A | 2019-05-01 14:00 A | 60 | 100% |  |  | Jan Kalwin; Jan Zamoyski | 144h | 144h | 7,902 | 7,902 |
| 63 | 2.8.5 | Podsumowanie Sprint 7 |  | 3h | 2019-05-01 14:00 A | 2019-05-01 17:00 A | 62, 61 | 100% |  |  | Jan Kalwin; Hugo Kołłątaj; Tadeusz Kościuszko; Krzysztof Kolumb; Jan Zamoyski; Marcin Luter; Stanisław Staszic; Karol Wielki; Otton III; Jan Karol Chodkiewicz; Ferdynand Magellan; Jerzy Waszyngton; Wiesław Wszywka | 39h | 39h | 2,128.8 | 2,128.8 |
| 64 | 2.9 | Zaawansowana funkcjonalność |  | 5d | 2019-05-01 17:00 A | 2019-05-08 17:00 | 63 |  | 5d | 0d |  |  |  |  |  |
| 65 | 3 | **Wydanie Produktu** |  | 31d | 2019-05-09 08:00 | 2019-06-20 17:00 | 64 |  |  | 0d | Zakup Domeny; Przestrzeń dyskowa /Serwer | 1968h |  | 300,986.8 |  |
| 66 | 3.1 | Wypuszczenie Aplikacji | milestone | 8h | 2019-05-09 08:00 | 2019-05-09 17:00 | 64 |  |  | 0d | Jerzy Waszyngton; Otton III; Jan Kalwin; Jan Zamoyski; Marcin Luter; Ferdynand Magellan | 48h |  | 3,002.8 |  |
| 67 | 3.2 | Rozwiązywanie defektów występujących po wydaniu produktu |  | 240h | 2019-05-10 08:00 | 2019-06-20 17:00 | 66 |  |  | 0d | Jan Kalwin; Hugo Kołłątaj; Tadeusz Kościuszko; Jan Zamoyski; Marcin Luter; Oktawian August; Stanisław Staszic; Ferdynand Magellan | 1920h |  | 87,984 |  |
